# Cronograma_Preliminar

Schedule from MS Project, 2016-08-22 to 2016-10-10, costs in R$.

## Calendars

- Padrão: Mon-Fri 09:00-12:00, 13:00-18:00; Sat-Sun off.

## Resources

| Resource | Rate |
| --- | --- |
| Vinícius | 200 |
| Cliente |  |
| Adler | 300 |
| Antônio | 150 |
| Grupo Externo | 300 |
| José | 100 |
| Maria | 100 |
| Marcos | 100 |
| Alexandre | 100 |

## Schedule

| ID | WBS | Task | Duration | Start | Finish | Predecessors | Total slack | Free slack | Resources | Work | Cost |
| --- | --- | --- | --- | --- | --- | --- | --- | --- | --- | --- | --- |
| 1 | 1 | **Projeto Clínica Médica** | 35.05d? | 2016-08-22 | 2016-10-10 |  | 0d |  |  | 489h | 61,702.46 |
| 2 | 1.1 | **Prospecção** | 2.25d | 2016-08-22 | 2016-08-24 |  | 0.15d | 0d |  | 16h | 3,250 |
| 3 | 1.1.1 | **Proposta Técnica** | 2.25d | 2016-08-22 | 2016-08-24 |  | 0.15d |  |  | 11h | 2,150 |
| 4 | 1.1.1.1 | Estudar Domínio de Aplicação | 0.25d | 2016-08-24 | 2016-08-24 |  | 0.15d |  | Vinícius | 2h | 400 |
| 5 | 1.1.1.2 | Redigir Proposta Técnica | 1d | 2016-08-22 | 2016-08-22 |  | 0.9d | 0.38d | Vinícius | 8h | 1,600 |
| 6 | 1.1.1.3 | Revisar Proposta Técnica | 0.12d | 2016-08-23 | 2016-08-23 | 5 | 0.52d |  | Antônio | 1h | 150 |
| 7 | 1.1.2 | **Estimativa Preliminar de Tamanho** | 0.25d | 2016-08-22 | 2016-08-22 |  | 1.5d |  |  | 2h | 500 |
| 8 | 1.1.2.1 | Estimar Tamanho do Projeto | 0.12d | 2016-08-22 | 2016-08-22 |  | 1.5d | 0d | Vinícius | 1h | 200 |
| 9 | 1.1.2.2 | Revisar Estimativa de Tamanho do Projeto | 0.12d | 2016-08-22 | 2016-08-22 | 8 | 1.5d | 0.12d | Adler | 1h | 300 |
| 10 | 1.1.3 | **Estimativa Preliminar de Cronograma e Orçamento** | 0.38d | 2016-08-22 | 2016-08-22 |  | 1.38d |  |  | 3h | 600 |
| 11 | 1.1.3.1 | Elaborar Cronograma e Orçamento Preliminares | 0.25d | 2016-08-22 | 2016-08-22 | 9 | 1.38d | 0d | Antônio | 2h | 300 |
| 12 | 1.1.3.2 | Revisar Cronograma e Orçamento Preliminares | 0.12d | 2016-08-22 | 2016-08-22 | 11 | 1.65d |  | Adler | 1h | 300 |
| 13 | 1.2 | **Análise** | 6.98d? | 2016-08-24 | 2016-09-02 | 2 | 0.15d | 0d |  | 57h | 8,852.46 |
| 14 | 1.2.1 | **Documento de Requisitos** | 6.98d? | 2016-08-24 | 2016-09-02 |  | 0.15d |  |  | 37h | 5,452.46 |
| 15 | 1.2.1.1 | Elaborar o Documento de Requisitos | 6.1d? | 2016-08-24 | 2016-09-01 |  | 0.15d | 0d | Antônio [23.5%]; Alexandre [23.5%]; Marcos [23.5%] | 30h | 3,352.46 |
| 16 | 1.2.1.2 | Revisar Documentos de Requisitos | 0.88d? | 2016-09-01 | 2016-09-02 | 15 | 0.15d |  | Adler | 7h | 2,100 |
| 17 | 1.2.2 | **Matriz de Rastreabilidade Bidirecional** | 2.62d? | 2016-08-24 | 2016-08-26 |  | 4.5d |  |  | 20h | 3,400 |
| 18 | 1.2.2.1 | Elaborar MRB | 1.62d? | 2016-08-24 | 2016-08-25 |  | 4.5d | 0d | José | 13h | 1,300 |
| 19 | 1.2.2.2 | Revisar MRB | 1d? | 2016-08-25 | 2016-08-26 | 18 | 4.5d | 4.35d | Adler [87.5%] | 7h | 2,100 |
| 20 | 1.3 | **Projeto** | 4.02d? | 2016-09-02 | 2016-09-08 | 19 | 0d |  |  | 22h | 2,500 |
| 21 | 1.3.1 | **Diagrama de Classes** | 2.52d? | 2016-09-02 | 2016-09-06 |  | 0d |  |  | 17h | 1,800 |
| 22 | 1.3.1.1 | Elaborar Diagrama de Classes | 1d? | 2016-09-02 | 2016-09-05 | 13 | 0.15d |  | José | 8h | 800 |
| 23 | 1.3.1.2 | Revisar Diagrama de Classes | 0.5d? | 2016-09-05 | 2016-09-05 | 22 | 0d |  | Antônio [50%] | 2h | 300 |
| 24 | 1.3.1.3 | Atualizar MRB | 0.88d? | 2016-09-05 | 2016-09-06 | 23 | 0d |  | Maria | 7h | 700 |

| ID | WBS | Task | Duration | Start | Finish | Predecessors | Total slack | Free slack | Resources | Work | Cost |
| --- | --- | --- | --- | --- | --- | --- | --- | --- | --- | --- | --- |
| 25 | 1.3.2 | **Modelo entidade relacionamento** | 1.5d? | 2016-09-06 | 2016-09-08 |  | 0d |  |  | 5h | 700 |
| 26 | 1.3.2.1 | Elaborar MER | 1d? | 2016-09-06 | 2016-09-07 | 24 | 0d |  | Maria [50%] | 4h | 400 |
| 27 | 1.3.2.2 | Revisar MER | 0.5d? | 2016-09-07 | 2016-09-08 | 26 | 0d |  | Adler [25%] | 1h | 300 |
| 28 | 1.4 | **Planejamento** | 7.25d? | 2016-09-08 | 2016-09-19 | 27 | 0d |  |  | 35h | 7,700 |
| 29 | 1.4.1 | **Reunir-se com a equipe desenvolvedora** | 6.25d? | 2016-09-08 | 2016-09-16 |  | 0d |  |  | 32h | 7,200 |
| 30 | 1.4.1.1 | Explanar o cronograma, diagrama de classes e o MER com a equipe | 2.25d? | 2016-09-08 | 2016-09-12 | 27 | 0d |  | Vinícius | 18h | 3,600 |
| 31 | 1.4.1.2 | Discutir os métodos de desenvolvimento | 1d? | 2016-09-12 | 2016-09-13 | 30 | 0d |  | Grupo Externo | 8h | 2,400 |
| 32 | 1.4.1.3 | Dividir as tarefas com a equipe | 1d? | 2016-09-13 | 2016-09-14 | 31 | 0d |  | Vinícius [25%] | 2h | 400 |
| 33 | 1.4.1.4 | Explanar o que se espera do projeto | 1d? | 2016-09-14 | 2016-09-15 | 32 | 0d |  | Vinícius [37.5%] | 3h | 600 |
| 34 | 1.4.1.5 | Motivar a equipe | 1d? | 2016-09-15 | 2016-09-16 | 33 | 0d |  | Vinícius [12.5%] | 1h | 200 |
| 35 | 1.4.2 | **Conferir a infraestrutura da empresa** | 7.25d? | 2016-09-08 | 2016-09-19 |  | 6.25d |  |  | 3h | 500 |
| 36 | 1.4.2.1 | Verificar se haverá necessidade de compra de equipamentos e/ou softwares | 1d? | 2016-09-08 | 2016-09-09 | 9 | 20.8d |  | José [12.5%] | 1h | 100 |
| 37 | 1.4.2.2 | Alocar a equipe no seu local de trabalho | 1d? | 2016-09-16 | 2016-09-19 | 34 | 0d |  | Vinícius [25%] | 2h | 400 |
| 38 | 1.5 | **Desenvolvimento** | 14.55d? | 2016-09-19 | 2016-10-10 | 37 | 0d |  |  | 293h | 31,600 |
| 39 | 1.5.1 | **Release 01** | 14.55d? | 2016-09-19 | 2016-10-10 | 37 | 0d |  |  | 233h | 25,350 |
| 40 | 1.5.1.1 | **Implementação** | 6.72d | 2016-09-19 | 2016-09-28 |  | 0d |  |  | 145h | 15,750 |
| 41 | 1.5.1.1.1 | Implementar RFC01 | 2.25d | 2016-09-22 | 2016-09-27 | 37 | 3.88d | 0.88d | José | 18h | 1,800 |
| 42 | 1.5.1.1.2 | Implementar RFC02 | 2.25d | 2016-09-19 | 2016-09-28 | 37 | 5.78d | 0d | Maria | 18h | 1,800 |
| 43 | 1.5.1.1.3 | Implementar RFC03 | 2.25d | 2016-09-20 | 2016-09-26 | 37 | 6.12d | 0d | Antônio | 18h | 2,700 |
| 44 | 1.5.1.1.4 | Implementar RFC04 | 2.25d | 2016-09-19 | 2016-09-22 | 37 | 0d |  | Marcos | 18h | 1,800 |
| 45 | 1.5.1.1.5 | Implementar RFC05 | 2.25d | 2016-09-19 | 2016-09-23 | 37 | 5.75d | 0.12d | Alexandre | 18h | 1,800 |
| 46 | 1.5.1.1.6 | Implementar RFC06 | 1.38d | 2016-09-19 | 2016-09-20 | 37 | 1.12d | 0.12d | José | 11h | 1,100 |
| 47 | 1.5.1.1.7 | Implementar RFC07 | 1.38d | 2016-09-19 | 2016-09-26 | 37 | 9.25d | 0d | Maria | 11h | 1,100 |
| 48 | 1.5.1.1.8 | Implementar RFC08 | 0.88d | 2016-09-22 | 2016-09-22 | 44 | 7.5d | 1d | Marcos | 7h | 700 |
| 49 | 1.5.1.1.9 | Implementar RFC09 | 0.88d | 2016-09-19 | 2016-09-20 | 37 | 2.25d | 0d | Antônio | 7h | 1,050 |
| 50 | 1.5.1.1.10 | Implementar RFC10 | 0.88d | 2016-09-19 | 2016-09-20 | 37 | 3.92d | 0d | Alexandre | 7h | 700 |
| 51 | 1.5.1.1.11 | Implementar RFC11 | 0.75d | 2016-09-21 | 2016-09-21 | 37 | 7.17d | 0d | José | 6h | 600 |
| 52 | 1.5.1.1.12 | Implementar RFC12 | 0.75d | 2016-09-19 | 2016-09-20 | 37 | 8.75d | 1.12d | Marcos | 6h | 600 |

| ID | WBS | Task | Duration | Start | Finish | Predecessors | Total slack | Free slack | Resources | Work | Cost |
| --- | --- | --- | --- | --- | --- | --- | --- | --- | --- | --- | --- |
| 53 | 1.5.1.2 | **Teste** | 10.05d? | 2016-09-26 | 2016-10-10 |  | 0d |  |  | 88h | 9,600 |
| 54 | 1.5.1.2.1 | Testar RFC01 | 1.12d? | 2016-10-03 | 2016-10-04 | 41 | 3.92d |  | José | 9h | 900 |
| 55 | 1.5.1.2.2 | Testar RFC02 | 1.12d | 2016-09-29 | 2016-09-30 | 42 | 5.8d |  | Marcos | 9h | 900 |
| 56 | 1.5.1.2.3 | Testar RFC03 | 1.12d | 2016-09-28 | 2016-09-29 | 43 | 6.12d |  | Maria | 9h | 900 |
| 57 | 1.5.1.2.4 | Testar RFC04 | 1.12d | 2016-10-05 | 2016-10-10 | 44 | 0d |  | Alexandre | 9h | 900 |
| 58 | 1.5.1.2.5 | Testar RFC05 | 1.12d | 2016-09-27 | 2016-09-30 | 45 | 5.25d |  | Antônio | 9h | 1,350 |
| 59 | 1.5.1.2.6 | Testar RFC06 | 0.62d? | 2016-09-29 | 2016-09-29 | 46 | 6.42d |  | José | 5h | 500 |
| 60 | 1.5.1.2.7 | Testar RFC07 | 0.62d? | 2016-09-26 | 2016-09-26 | 47 | 9.25d |  | Marcos | 5h | 500 |
| 61 | 1.5.1.2.8 | Testar RFC08 | 0.62d? | 2016-09-26 | 2016-09-28 | 48 | 7.67d |  | Maria | 5h | 500 |
| 62 | 1.5.1.2.9 | Testar RFC09 | 0.88d? | 2016-10-04 | 2016-10-05 | 49 | 2.38d |  | Alexandre | 7h | 700 |
| 63 | 1.5.1.2.10 | Testar RFC10 | 0.88d | 2016-09-26 | 2016-09-27 | 50 | 8.25d |  | Antônio | 7h | 1,050 |
| 64 | 1.5.1.2.11 | Testar RFC11 | 0.88d? | 2016-09-28 | 2016-09-28 | 51 | 7.17d |  | José | 7h | 700 |
| 65 | 1.5.1.2.12 | Testar RFC12 | 0.88d? | 2016-09-26 | 2016-09-26 | 52 | 9.18d |  | Marcos | 7h | 700 |
| 66 | 1.5.2 | **Release 02** | 11d? | 2016-09-20 | 2016-10-05 |  | 1.95d |  |  | 60h | 6,250 |
| 67 | 1.5.2.1 | **Implementação** | 5.62d? | 2016-09-20 | 2016-09-27 |  | 1.95d |  |  | 35h | 3,500 |
| 68 | 1.5.2.1.1 | Implementar RFC13 | 0.88d? | 2016-09-27 | 2016-09-27 | 44 | 7.42d | 0d | José | 7h | 700 |
| 69 | 1.5.2.1.2 | Implementar RFC14 | 0.88d? | 2016-09-21 | 2016-09-22 | 46 | 1.32d | 0.75d | Maria | 7h | 700 |
| 70 | 1.5.2.1.3 | Implementar RFC15 | 0.88d? | 2016-09-21 | 2016-09-22 | 49 | 6.38d | 0.25d | José | 7h | 700 |
| 71 | 1.5.2.1.4 | Implementar RFC16 | 0.88d | 2016-09-20 | 2016-09-21 | 50 | 7.75d | 0d | Maria | 7h | 700 |
| 72 | 1.5.2.1.5 | Implementar RFC17 | 0.88d | 2016-09-20 | 2016-09-21 | 49, 50 | 3.55d | 0d | Alexandre | 7h | 700 |
| 73 | 1.5.2.2 | **Teste** | 9.75d | 2016-09-21 | 2016-10-05 |  | 2.67d |  |  | 25h | 2,750 |
| 74 | 1.5.2.2.1 | Testar RFC13 | 0.62d | 2016-09-28 | 2016-09-28 | 68 | 7.42d |  | Marcos | 5h | 500 |
| 75 | 1.5.2.2.2 | Testar RFC14 | 0.62d | 2016-09-26 | 2016-10-05 | 69 | 2.67d |  | Alexandre | 5h | 500 |
| 76 | 1.5.2.2.3 | Testar RFC15 | 0.62d | 2016-09-28 | 2016-09-28 | 70 | 7d |  | Antônio | 5h | 750 |
| 77 | 1.5.2.2.4 | Testar RFC16 | 0.62d | 2016-09-22 | 2016-09-29 | 71 | 6.8d |  | José | 5h | 500 |
| 78 | 1.5.2.2.5 | Testar RFC17 | 0.62d | 2016-09-21 | 2016-09-22 | 72 | 3.55d | 0d | Maria | 5h | 500 |

| ID | WBS | Task | Duration | Start | Finish | Predecessors | Total slack | Free slack | Resources | Work | Cost |
| --- | --- | --- | --- | --- | --- | --- | --- | --- | --- | --- | --- |
| 79 | 1.6 | **Monitoramento e Controle** | 1.5d? | 2016-09-22 | 2016-09-23 | 78 | 3.55d |  |  | 12h | 2,400 |
| 80 | 1.6.1 | Acompanhar Projeto | 1.5d? | 2016-09-22 | 2016-09-23 | 78 | 3.55d | 0d | Vinícius | 12h | 2,400 |
| 81 | 1.7 | **Fechamento** | 4.5d | 2016-09-23 | 2016-09-30 | 80 | 3.55d |  |  | 36h | 3,600 |
| 82 | 1.7.1 | Revisar Projeto | 2.25d | 2016-09-23 | 2016-09-27 | 80 | 3.55d | 0d | Alexandre | 18h | 1,800 |
| 83 | 1.7.2 | Fazer um comparativo com a Proposta Técnica | 2.25d | 2016-09-28 | 2016-09-30 | 82 | 3.55d | 0d | Alexandre | 18h | 1,800 |
| 84 | 1.8 | **Controle de Mudanças** | 2.25d | 2016-09-30 | 2016-10-04 | 83 | 3.55d |  |  | 18h | 1,800 |
| 85 | 1.8.1 | Realizar mudanças se o projeto não estiver dentro do desejado | 2.25d | 2016-09-30 | 2016-10-04 | 83 | 3.55d |  | Alexandre | 18h | 1,800 |
